# Tower A foundations

Schedule from Primavera P6, 2026-08-03 to 2026-08-31, data date 2026-08-06, A marks actual dates.

## Calendars

- India 6-day: Mon-Sat 08:00-16:59; Sun off. Exceptions (off unless hours are given): 2026-08-15.

## Schedule

| ID | WBS | Activity | Type | Duration | Start | Finish | Predecessors | Complete | Constraint | Calendar |
| --- | --- | --- | --- | --- | --- | --- | --- | --- | --- | --- |
|  | PIL | **Piling** |  |  | 2026-08-03 | 2026-08-20 |  |  |  |  |
| A1000 |  | Mobilisation |  | 3d | 2026-08-03 A | 2026-08-05 A |  | 100% |  | India 6-day |
| A1010 |  | Bored piles |  | 12d | 2026-08-06 A | 2026-08-20 | A1000 | 40% |  | India 6-day |
|  | SPARE | **Nothing planned here yet** |  |  |  |  |  |  |  |  |
|  | RFT | **Raft** |  |  | 2026-08-11 | 2026-08-31 |  |  |  |  |
| A1020 |  | Pile caps |  | 6d | 2026-08-11 | 2026-08-18 | A1010 SS+4d |  |  |  |
| A1030 |  | Raft concrete |  | 5d | 2026-08-26 | 2026-08-31 | A1020 FF+1d |  | start on or after 2026-08-26 |  |
| A1040 |  | Raft complete | milestone | 0d |  | 2026-08-31 | A1030 |  |  |  |
